# OA系统开发进度表

Schedule from MS Project, 2009-12-24 to 2010-06-09, A marks actual dates.
微软中国

## Calendars

- 标准: Mon-Fri 08:00-12:00, 13:00-17:00; Sat-Sun off. Exceptions (off unless hours are given): 2010-05-22 08:00-12:00, 13:00-17:00.

## Resources

| Resource |
| --- |
| WHS |
| LJX |
| ZHANGY |
| LIUJ |
| SZW |

## Schedule

| ID | WBS | Task | Duration | Start | Finish | Predecessors | Complete | Remaining | Total slack | Constraint | Resources | Work | Actual work |
| --- | --- | --- | --- | --- | --- | --- | --- | --- | --- | --- | --- | --- | --- |
| 1 | 1 | **OA系统开发进度表** | 119d? | 2009-12-28 A | 2010-06-09 |  | 59% | 49.06d? | 0d |  |  | 992h | 598.4h |
| 2 | 1.1 | **办公管理** | 102d? | 2009-12-28 A | 2010-05-18 |  | 78% | 22.75d? | 17d |  |  | 368h | 310.4h |
| 3 | 1.1.1 | **个人办公** | 12d | 2009-12-28 A | 2010-01-12 |  | 88% | 1.5d | 107d |  |  | 56h | 56h |
| 4 | 1.1.1.1 | 日程安排 | 2d | 2009-12-29 A | 2009-12-30 A |  | 100% |  |  | start no earlier than 2009-12-29 | WHS | 16h | 16h |
| 5 | 1.1.1.2 | 工作日志模块 | 2d | 2010-01-01 A | 2010-01-04 A | 4 | 100% |  |  | finish no earlier than 2010-01-04 | WHS | 16h | 16h |
| 6 | 1.1.1.3 | 报批件模块 | 3d | 2010-01-08 A | 2010-01-12 A | 5 | 100% |  |  | finish no earlier than 2010-01-12 | WHS | 24h | 24h |
| 7 | 1.1.1.4 | 通讯录 | 1d | 2009-12-28 | 2009-12-28 |  |  |  | 100d |  |  |  |  |
| 8 | 1.1.2 | **会议管理** | 11d | 2010-01-07 A | 2010-01-21 |  | 91% | 1d | 100d |  |  | 88h | 80h |
| 9 | 1.1.2.1 | 会议室设置模块 | 2d | 2010-01-07 A | 2010-01-08 A |  | 100% |  |  | start no earlier than 2010-01-07 | LJX | 16h | 16h |
| 10 | 1.1.2.2 | 会议类型设置 | 2d | 2010-01-11 A | 2010-01-12 A | 9 | 100% |  |  | start no earlier than 2010-01-07 | LJX | 16h | 16h |
| 11 | 1.1.2.3 | 会议上传材料模板设置 | 2d | 2010-01-13 A | 2010-01-14 A | 10 | 100% |  |  | finish no earlier than 2010-01-11 | LJX | 16h | 16h |
| 12 | 1.1.2.4 | **会议申请** | 5d | 2010-01-15 A | 2010-01-21 |  | 80% | 1d | 100d |  |  | 40h | 32h |
| 13 | 1.1.2.4.1 | 会议室申请 | 2d | 2010-01-15 A | 2010-01-18 A | 11 | 100% |  |  |  | LJX | 16h | 16h |
| 14 | 1.1.2.4.2 | 会议申请 | 2d | 2010-01-19 A | 2010-01-20 A | 13 | 100% |  |  |  | LJX | 16h | 16h |
| 15 | 1.1.2.4.3 | 会议材料上传 | 1d | 2010-01-21 | 2010-01-21 | 14 |  |  | 87d |  | LJX | 8h |  |
| 16 | 1.1.3 | 订餐管理 | 1d | 2010-01-22 A | 2010-01-22 A |  | 100% |  |  | start no earlier than 2010-01-22 | LJX | 8h | 8h |
| 17 | 1.1.4 | **出差管理** | 70d | 2010-02-10 A | 2010-05-18 |  | 71% | 20.22d | 17d |  |  | 64h | 51.2h |
| 18 | 1.1.4.1 | 出差申请 | 6d | 2010-02-10 A | 2010-02-17 A |  | 100% |  |  | start no earlier than 2010-02-10 | LIUJ | 48h | 48h |
| 19 | 1.1.4.2 | 出差报告 | 2d | 2010-02-22 A | 2010-02-23 | 18 | 20% | 1.6d | 77d | start no earlier than 2010-02-20 | LIUJ | 16h | 3.2h |
| 20 | 1.1.4.3 | 出差报告上传与UI调整 | 1d | 2010-05-18 | 2010-05-18 |  |  |  | 4d | start no earlier than 2010-05-18 |  |  |  |
| 21 | 1.1.5 | **公文管理** | 12d | 2010-01-25 A | 2010-02-09 |  | 80% | 2.4d | 87d |  |  | 64h | 64h |
| 22 | 1.1.5.1 | 公文类型定义 | 1d | 2010-01-25 A | 2010-01-25 A |  | 100% |  |  | start no earlier than 2010-01-25 | LJX | 8h | 8h |
| 23 | 1.1.5.2 | 密级定义 | 1d | 2010-01-26 A | 2010-01-26 A |  | 100% |  |  | start no earlier than 2010-01-26 | LJX | 8h | 8h |
| 24 | 1.1.5.3 | 缓急定义 | 1d | 2010-01-27 A | 2010-01-27 A |  | 100% |  |  | start no earlier than 2010-01-27 | LJX | 8h | 8h |
| 25 | 1.1.5.4 | 公文模板定义 | 2d | 2010-01-28 A | 2010-01-29 A |  | 100% |  |  | start no earlier than 2010-01-28 | LJX | 16h | 16h |
| 26 | 1.1.5.5 | 公司发文 | 3d | 2010-02-01 A | 2010-02-03 A |  | 100% |  |  | start no earlier than 2010-02-01 | LJX | 24h | 24h |
| 27 | 1.1.5.6 | 公文分发 | 4d | 2010-02-04 A | 2010-02-09 |  | 40% | 2.4d | 74d | finish no earlier than 2010-02-09 |  |  |  |

| ID | WBS | Task | Duration | Start | Finish | Predecessors | Complete | Remaining | Total slack | Free slack | Constraint | Resources | Work | Actual work |
| --- | --- | --- | --- | --- | --- | --- | --- | --- | --- | --- | --- | --- | --- | --- |
| 28 | 1.1.6 | **员工调查** | 8d | 2010-01-13 A | 2010-01-22 |  | 80% | 1.6d | 99d |  |  |  | 64h | 51.2h |
| 29 | 1.1.6.1 | 员工调查表定义 | 4d | 2010-01-13 A | 2010-01-18 A | 6 | 100% |  |  |  | start no earlier than 2010-01-08 | WHS | 32h | 32h |
| 30 | 1.1.6.2 | 调查处理模块 | 2d | 2010-01-19 A | 2010-01-20 A | 29 | 100% |  |  |  | start no earlier than 2010-01-12 | WHS | 16h | 16h |
| 31 | 1.1.6.3 | 调查结果发布 | 2d | 2010-01-21 A | 2010-01-22 | 30 | 20% | 1.6d | 99d |  | start no earlier than 2010-01-14 | WHS | 16h | 3.2h |
| 32 | 1.1.7 | **员工满意度调查** | 2d? | 2009-12-28 | 2009-12-29 |  |  |  | 117d |  |  |  | 24h |  |
| 33 | 1.1.7.1 | 满意度调查表定义 | 1d? | 2009-12-28 | 2009-12-28 |  |  |  | 118d |  |  | SZW | 8h |  |
| 34 | 1.1.7.2 | 模块开发 | 2d | 2009-12-28 | 2009-12-29 |  |  |  | 117d |  |  | SZW | 16h |  |
| 35 | 1.2 | **行政管理** | 119d? | 2009-12-28 A | 2010-06-09 |  | 46% | 64.08d? | 0d |  |  |  | 624h | 288h |
| 36 | 1.2.1 | **档案管理** | 5d | 2010-01-14 A | 2010-01-20 |  | 80% | 1d | 101d |  |  |  | 40h | 32h |
| 37 | 1.2.1.1 | 档案录入 | 3d | 2010-01-14 A | 2010-01-18 A |  | 100% |  |  |  | start no earlier than 2010-01-14 | ZHANGY | 24h | 24h |
| 38 | 1.2.1.2 | 档案借阅 | 2d | 2010-01-19 A | 2010-01-20 | 37 | 50% | 1d | 101d |  | start no earlier than 2010-01-19 | ZHANGY | 16h | 8h |
| 39 | 1.2.2 | **机构管理** | 8d | 2010-01-21 A | 2010-02-01 |  | 80% | 1.6d | 93d |  |  |  | 64h | 51.2h |
| 40 | 1.2.2.1 | 机构注册 | 3d | 2010-01-21 A | 2010-01-25 A | 38 | 100% |  |  |  | start no earlier than 2010-01-15 | ZHANGY | 24h | 24h |
| 41 | 1.2.2.2 | 证照印章记录 | 3d | 2010-01-26 A | 2010-01-28 A | 40 | 100% |  |  |  | start no earlier than 2010-01-18 | ZHANGY | 24h | 24h |
| 42 | 1.2.2.3 | 外借申请 | 2d | 2010-01-29 A | 2010-02-01 | 41 | 20% | 1.6d | 93d |  | start no earlier than 2010-01-20 | ZHANGY | 16h | 3.2h |
| 43 | 1.2.3 | **车辆管理** | 99d | 2010-01-25 A | 2010-06-09 |  | 35% | 64.06d | 0d |  |  |  | 272h | 96h |
| 44 | 1.2.3.1 | 车辆档案 | 2d | 2010-01-25 A | 2010-01-26 A | 31 | 100% |  |  |  | start no earlier than 2010-01-21 | WHS | 16h | 16h |
| 45 | 1.2.3.2 | 用车申请 | 4d | 2010-01-27 A | 2010-02-01 A | 44 | 100% |  |  |  | start no earlier than 2010-01-25 | WHS | 32h | 32h |
| 46 | 1.2.3.3 | 保养申请 | 2d | 2010-02-02 A | 2010-02-03 A | 45 | 100% |  |  |  | start no earlier than 2010-01-27 | WHS | 16h | 16h |
| 47 | 1.2.3.4 | 维修申请 | 2d | 2010-02-04 A | 2010-02-05 A | 46 | 100% |  |  |  | start no earlier than 2010-01-29 | WHS | 16h | 16h |
| 48 | 1.2.3.5 | 事故记录 | 2d | 2010-02-08 A | 2010-02-09 A | 47 | 100% |  |  |  |  | WHS | 16h | 16h |
| 49 | 1.2.3.6 | 费用记录 | 3d | 2010-02-10 | 2010-02-12 | 48 |  |  | 84d |  | start no earlier than 2010-02-04 | WHS | 24h |  |
| 50 | 1.2.3.7 | 派车管理 | 12d | 2010-05-17 | 2010-05-31 |  |  |  | 5d |  | finish no earlier than 2010-05-31 | SZW | 96h |  |
| 51 | 1.2.3.8 | 停车卡管理 | 2d | 2010-06-04 | 2010-06-07 | 52 |  |  | 2d |  |  | SZW | 16h |  |
| 52 | 1.2.3.9 | 调度记录 | 3d | 2010-06-01 | 2010-06-03 |  |  |  | 2d | 0d | start no earlier than 2010-06-01 | SZW | 24h |  |
| 53 | 1.2.3.10 | 保养记录 | 1d | 2010-06-08 | 2010-06-08 | 50 |  |  | 0d |  | start no earlier than 2010-06-08 | SZW | 8h |  |
| 54 | 1.2.3.11 | 维修记录 | 1d | 2010-06-09 | 2010-06-09 | 53 |  |  | 0d |  |  | SZW | 8h |  |

| ID | WBS | Task | Duration | Start | Finish | Predecessors | Complete | Remaining | Total slack | Free slack | Constraint | Resources | Work | Actual work |
| --- | --- | --- | --- | --- | --- | --- | --- | --- | --- | --- | --- | --- | --- | --- |
| 55 | 1.2.4 | **员工住房** | 79d | 2010-02-02 A | 2010-05-21 |  | 47% | 42.13d | 14d |  |  |  | 96h | 44.8h |
| 56 | 1.2.4.1 | 房源记录 | 2d | 2010-02-02 A | 2010-02-03 A | 42 | 100% |  |  |  | start no earlier than 2010-01-14 | ZHANGY | 16h | 16h |
| 57 | 1.2.4.2 | 房源发布 | 3d | 2010-02-04 A | 2010-02-08 A | 56 | 100% |  |  |  |  | ZHANGY | 24h | 24h |
| 58 | 1.2.4.3 | 租房管理 | 2d | 2010-02-09 A | 2010-02-10 | 57 | 30% | 1.4d | 86d |  |  | ZHANGY | 16h | 4.8h |
| 59 | 1.2.4.4 | 房源发布调整 | 2d | 2010-05-17 | 2010-05-18 |  |  |  | 17d |  | start no earlier than 2010-05-17 | LJX | 16h |  |
| 60 | 1.2.4.5 | 租房申请/确认 | 1d | 2010-05-19 | 2010-05-19 |  |  |  | 16d |  | start no earlier than 2010-05-19 | LJX | 8h |  |
| 61 | 1.2.4.6 | 住房记录 | 2d | 2010-05-20 | 2010-05-21 |  |  |  | 14d |  | start no earlier than 2010-05-20 | LJX | 16h |  |
| 62 | 1.2.5 | **合同管理** | 90d | 2010-01-21 A | 2010-05-25 |  | 40% | 54d | 11d |  |  |  | 64h | 25.6h |
| 63 | 1.2.5.1 | 合同类型定义 | 1d | 2010-01-21 A | 2010-01-21 A |  | 100% |  |  |  | start no earlier than 2010-01-21 | LIUJ | 8h | 8h |
| 64 | 1.2.5.2 | 合同模板 | 1d | 2010-01-22 A | 2010-01-22 A | 63 | 100% |  |  |  |  | LIUJ | 8h | 8h |
| 65 | 1.2.5.3 | 合同审批 | 2d | 2010-01-25 A | 2010-01-26 | 64 | 60% | 0.8d | 97d |  |  | LIUJ | 16h | 9.6h |
| 66 | 1.2.5.4 | 合同查看申请 | 2d | 2010-05-21 | 2010-05-22 |  |  |  | 11d | 0d | finish no earlier than 2010-05-22 | LIUJ | 16h |  |
| 67 | 1.2.5.5 | 合同打印与上传 | 2d | 2010-05-24 | 2010-05-25 | 66 |  |  | 11d |  |  | LIUJ | 16h |  |
| 68 | 1.2.6 | **福利管理** | 82d | 2010-01-27 A | 2010-05-20 |  | 53% | 38.26d | 15d |  |  |  | 72h | 38.4h |
| 69 | 1.2.6.1 | 标准定义 | 2d | 2010-01-27 A | 2010-01-28 A | 67 | 100% |  |  |  |  | LIUJ | 16h | 16h |
| 70 | 1.2.6.2 | 福利发放 | 4d | 2010-01-30 A | 2010-02-04 | 69 | 70% | 1.2d | 90d |  |  | LIUJ | 32h | 22.4h |
| 71 | 1.2.6.3 | UI调整 | 1d | 2010-05-17 | 2010-05-17 |  |  |  | 18d |  | start no earlier than 2010-05-17 | LIUJ | 8h |  |
| 72 | 1.2.6.4 | 福利发放撤销 | 2d | 2010-05-19 | 2010-05-20 |  |  |  | 15d |  | start no earlier than 2010-05-19 | LIUJ | 16h |  |
| 73 | 1.2.7 | **代理设置** | 1d? | 2009-12-28 | 2009-12-28 |  |  |  | 118d |  |  |  | 16h |  |
| 74 | 1.2.7.1 | 定义代理人 | 1d? | 2009-12-28 | 2009-12-28 |  |  |  | 118d |  |  | SZW | 8h |  |
| 75 | 1.2.7.2 | 取消代理人 | 1d? | 2009-12-28 | 2009-12-28 |  |  |  | 118d |  |  | SZW | 8h |  |
| 76 | 2 | **入场准备** | 20d | 2009-12-24 A | 2010-01-20 A |  | 100% |  |  |  |  |  | 96h | 96h |
| 77 | 2.1 | 王海胜 | 3d | 2009-12-24 A | 2009-12-28 A |  | 100% |  |  |  | start no earlier than 2009-12-24 | WHS | 24h | 24h |
| 78 | 2.2 | 刘建兴 | 3d | 2010-01-04 A | 2010-01-06 A |  | 100% |  |  |  | start no earlier than 2010-01-04 | LJX | 24h | 24h |
| 79 | 2.3 | 张煜 | 3d | 2010-01-11 A | 2010-01-13 A |  | 100% |  |  |  | start no earlier than 2010-01-11 | ZHANGY | 24h | 24h |
| 80 | 2.4 | 刘锦 | 3d | 2010-01-18 A | 2010-01-20 A |  | 100% |  |  |  | start no earlier than 2010-01-18 | LIUJ | 24h | 24h |
